# 餐谋长时间规划

Schedule from MS Project, 2020-04-01 to 2020-05-22.
Microsoft

## Calendars

- 标准: Mon-Fri 08:00-12:00, 13:00-17:00; Sat-Sun off.

## Resources

| Resource |
| --- |
| 项目经理 |
| 产品经理 |
| 技术专家 |
| UI专家 |
| 测试员 |

## Schedule

| ID | WBS | Task | Type | Duration | Start | Finish | Predecessors | Total slack | Resources | Work |
| --- | --- | --- | --- | --- | --- | --- | --- | --- | --- | --- |
| 1 | 1 | **启动** |  | 7d | 2020-04-01 | 2020-04-10 |  |  |  | 112h |
| 2 | 1.1 | 组建核心团队 |  | 1d? | 2020-04-01 | 2020-04-02 |  | 0d | 项目经理; 产品经理; 技术专家; UI专家; 测试员 | 40h |
| 3 | 1.2 | 干系人分析 |  | 1d? | 2020-04-01 | 2020-04-02 |  | 0d | 项目经理; 产品经理 | 16h |
| 4 | 1.3 | 里程碑计划 |  | 1d? | 2020-04-01 | 2020-04-02 |  | 0d | 项目经理 | 8h |
| 5 | 1.4 | 制定项目章程 |  | 1d? | 2020-04-02 | 2020-04-03 | 2, 3, 4 | 0d | 项目经理 | 8h |
| 6 | 1.5 | 项目启动大会 |  | 1d? | 2020-04-03 | 2020-04-06 | 5 | 0d | UI专家; 测试员; 产品经理; 技术专家; 项目经理 | 40h |
| 7 | 2 | **规划** |  | 10d | 2020-04-11 | 2020-04-24 |  |  |  | 135h |
| 8 | 2.1 | **规划范围** |  | 2d | 2020-04-11 | 2020-04-14 |  |  |  | 7h |
| 9 | 2.1.1 | 制定需求说明书 | manual | 0.12d | 2020-04-06 | 2020-04-07 | 6 |  | 产品经理 | 1h |
| 10 | 2.1.2 | 界面设计 | manual | 0.12d | 2020-04-07 | 2020-04-08 | 9 |  | UI专家 | 1h |
| 11 | 2.1.3 | 详细设计说明书 | manual | 0.12d | 2020-04-07 | 2020-04-08 | 9 |  | 项目经理 | 1h |
| 12 | 2.1.4 | 范围说明书 | manual | 0.12d | 2020-04-07 | 2020-04-08 | 9 |  | 项目经理 | 1h |
| 13 | 2.1.5 | 创建WBS | manual | 0.12d | 2020-04-08 | 2020-04-09 | 10, 11, 12 |  | 项目经理 | 1h |
| 14 | 2.1.6 | 形成范围基准 | manual | 0.12d | 2020-04-09 | 2020-04-10 | 13 |  | 产品经理; 项目经理 | 2h |
| 15 | 2.2 | **规划时间** |  | 2d | 2020-04-14 | 2020-04-16 |  |  |  | 32h |
| 16 | 2.2.1 | 排列工作包顺序 | manual | 1d | 2020-04-10 | 2020-04-13 | 14 |  | 项目经理 | 8h |
| 17 | 2.2.2 | 估算资源 | manual | 1d | 2020-04-13 | 2020-04-14 | 16 |  | 项目经理 | 8h |
| 18 | 2.2.3 | 估算项目持续时间 | manual | 1d | 2020-04-14 | 2020-04-15 | 17 |  | 项目经理 | 8h |
| 19 | 2.2.4 | 制定进度计划 | manual | 1d | 2020-04-15 | 2020-04-16 | 18 |  | 项目经理 | 8h |
| 20 | 2.3 | **规划成本** |  | 3d | 2020-04-15 | 2020-04-20 |  |  |  | 16h |
| 21 | 2.3.1 | 项目成本估算 | manual | 1d | 2020-04-16 | 2020-04-17 | 19 |  | 项目经理 | 8h |
| 22 | 2.3.2 | 项目预算 | manual | 1d | 2020-04-17 | 2020-04-20 | 21 |  | 项目经理 | 8h |
| 23 | 2.4 | **规划质量** |  | 1d | 2020-04-16 | 2020-04-17 |  |  |  | 16h |
| 24 | 2.4.1 | 制定测试计划 | manual | 1d | 2020-04-10 | 2020-04-13 | 14 |  | 测试员 | 8h |
| 25 | 2.4.2 | 制定测试用例 | manual | 1d | 2020-04-13 | 2020-04-14 | 24 |  | 测试员 | 8h |

| ID | WBS | Task | Type | Duration | Start | Finish | Predecessors | Resources | Work |
| --- | --- | --- | --- | --- | --- | --- | --- | --- | --- |
| 26 | 2.5 | **规划人力资源** |  | 1d | 2020-04-17 | 2020-04-20 |  |  | 32h |
| 27 | 2.5.1 | 制定人力资源计划 | manual | 1d | 2020-04-14 | 2020-04-15 | 17 | 产品经理; 项目经理 | 16h |
| 28 | 2.5.2 | 制定人员安排 | manual | 1d | 2020-04-15 | 2020-04-16 | 27 | 产品经理; 项目经理 | 16h |
| 29 | 2.6 | **规划沟通** |  | 1d | 2020-04-18 | 2020-04-20 |  |  | 8h |
| 30 | 2.6.1 | 制定沟通计划 | manual | 1d | 2020-04-16 | 2020-04-17 | 28 | 项目经理 | 8h |
| 31 | 2.7 | **规划风险** |  | 2d | 2020-04-20 | 2020-04-22 |  |  | 24h |
| 32 | 2.7.1 | 制定风险分析 | manual | 1d | 2020-04-17 | 2020-04-20 | 30 | 项目经理 | 8h |
| 33 | 2.7.2 | 制定风险登记册 | manual | 1d | 2020-04-20 | 2020-04-21 | 32 | 项目经理 | 8h |
| 34 | 2.7.3 | 制定风险规避计划 | manual | 1d | 2020-04-21 | 2020-04-22 | 33 | 项目经理 | 8h |
| 35 | 2.8 | 规划整合 | manual | 1d? | 2020-04-22 | 2020-04-23 | 34 |  |  |
| 36 | 3 | **执行与监控** |  | 20d | 2020-04-25 | 2020-05-22 |  |  | 412h |
| 37 | 3.1 | 组建项目团队 | manual | 1d | 2020-04-22 | 2020-04-23 | 34 | UI专家; 测试员; 产品经理; 技术专家; 项目经理 | 40h |
| 38 | 3.2 | **项目执行** |  | 18d | 2020-04-25 | 2020-05-20 |  |  | 168h |
| 39 | 3.2.1 | **买家模块** |  | 7d | 2020-04-25 | 2020-05-05 |  |  | 88h |
| 40 | 3.2.1.1 | 注册登录 | manual | 1d | 2020-04-22 | 2020-04-23 | 34 | 技术专家 | 8h |
| 41 | 3.2.1.2 | 首页浏览 | manual | 1d | 2020-04-22 | 2020-04-23 | 34 | 技术专家 | 8h |
| 42 | 3.2.1.3 | 搜索菜谱 | manual | 1d | 2020-04-22 | 2020-04-23 | 34 | 技术专家 | 8h |
| 43 | 3.2.1.4 | 查看菜谱详情 | manual | 1d | 2020-04-22 | 2020-04-23 | 34 | 技术专家 | 8h |
| 44 | 3.2.1.5 | 浏览菜品 | manual | 1d | 2020-04-22 | 2020-04-23 | 34 | 技术专家 | 8h |
| 45 | 3.2.1.6 | 添加购物车 | manual | 1d | 2020-04-23 | 2020-04-24 | 40 | 技术专家 | 8h |
| 46 | 3.2.1.7 | 添加地址 | manual | 1d | 2020-04-23 | 2020-04-24 | 40 | 技术专家 | 8h |
| 47 | 3.2.1.8 | 下单 | manual | 1d | 2020-04-23 | 2020-04-24 | 46 | 技术专家 | 8h |
| 48 | 3.2.1.9 | 更改个人信息 | manual | 1d | 2020-04-23 | 2020-04-24 | 40 | 技术专家 | 8h |
| 49 | 3.2.1.10 | 菜谱上传 | manual | 1d | 2020-04-23 | 2020-04-24 | 40 | 技术专家 | 8h |
| 50 | 3.2.1.11 | 浏览社区 | manual | 1d | 2020-04-23 | 2020-04-24 | 40 | 技术专家 | 8h |

| ID | WBS | Task | Type | Duration | Start | Finish | Predecessors | Resources | Work |
| --- | --- | --- | --- | --- | --- | --- | --- | --- | --- |
| 51 | 3.2.2 | **卖家模块** |  | 6d | 2020-04-25 | 2020-05-04 |  |  | 48h |
| 52 | 3.2.2.1 | 注册登录 | manual | 1d | 2020-04-22 | 2020-04-23 | 34 | 技术专家 | 8h |
| 53 | 3.2.2.2 | 注册商店 | manual | 1d | 2020-04-23 | 2020-04-24 | 52 | 技术专家 | 8h |
| 54 | 3.2.2.3 | 添加菜品 | manual | 1d | 2020-04-24 | 2020-04-27 | 53 | 技术专家 | 8h |
| 55 | 3.2.2.4 | 更改菜品信息 | manual | 1d | 2020-04-27 | 2020-04-28 | 54 | 技术专家 | 8h |
| 56 | 3.2.2.5 | 查看订单 | manual | 1d | 2020-04-23 | 2020-04-24 | 52 | 技术专家 | 8h |
| 57 | 3.2.2.6 | 订单处理 | manual | 1d | 2020-04-23 | 2020-04-24 | 52 | 技术专家 | 8h |
| 58 | 3.2.3 | **管理员模块** |  | 5d | 2020-04-25 | 2020-05-01 |  |  | 32h |
| 59 | 3.2.3.1 | 验证商家信息 | manual | 1d | 2020-04-24 | 2020-04-27 | 53 | 技术专家 | 8h |
| 60 | 3.2.3.2 | 更新首页推荐 | manual | 1d | 2020-04-22 | 2020-04-23 | 34 | 技术专家 | 8h |
| 61 | 3.2.3.3 | 更新菜谱信息 | manual | 1d | 2020-04-22 | 2020-04-23 | 34 | 技术专家 | 8h |
| 62 | 3.2.3.4 | 用户数据备份 | manual | 1d | 2020-04-23 | 2020-04-24 | 40, 52 | 技术专家 | 8h |
| 63 | 3.3 | **项目监控** |  | 6d | 2020-04-25 | 2020-05-04 |  |  | 152h |
| 64 | 3.3.1 | 各项指标监控 | manual | 1d | 2020-04-23 | 2020-04-24 | 37 | UI专家; 测试员; 产品经理; 项目经理 | 32h |
| 65 | 3.3.2 | 监控评审 | manual | 1d | 2020-04-24 | 2020-04-27 | 64 | UI专家; 测试员; 产品经理; 项目经理; 技术专家 | 40h |
| 66 | 3.3.3 | 变更评审 | manual | 1d | 2020-04-27 | 2020-04-28 | 65 | UI专家; 测试员; 产品经理; 项目经理; 技术专家 | 40h |
| 67 | 3.3.4 | 例会 | manual | 1d | 2020-04-28 | 2020-04-29 | 37 | UI专家; 测试员; 产品经理; 项目经理; 技术专家 | 40h |
| 68 | 3.4 | **管理干系人** |  | 1d | 2020-04-25 | 2020-04-27 |  |  | 40h |
| 69 | 3.4.1 | 发布项目信息 | manual | 1d | 2020-04-23 | 2020-04-24 | 37 | 产品经理; 项目经理 | 16h |
| 70 | 3.4.2 | 报告监控指标 | manual | 1d | 2020-04-23 | 2020-04-24 | 37 | 产品经理 | 8h |
| 71 | 3.4.3 | 干系人沟通 | manual | 1d | 2020-04-23 | 2020-04-24 | 37 | 产品经理; 项目经理 | 16h |
| 72 | 3.5 | **团队建设** |  | 1d | 2020-04-25 | 2020-04-27 |  |  | 7h |
| 73 | 3.5.1 | 培训 | manual | 0.12d | 2020-04-23 | 2020-04-24 | 37 | 产品经理; 技术专家 | 2h |
| 74 | 3.5.2 | 例会沟通 | manual | 0.12d | 2020-04-23 | 2020-04-24 | 37 | UI专家; 测试员; 产品经理; 技术专家; 项目经理 | 5h |
| 75 | 3.6 | 项目验收 | manual | 0.12d | 2020-04-23 | 2020-04-24 | 37 | UI专家; 测试员; 产品经理; 技术专家; 项目经理 | 5h |

| ID | WBS | Task | Type | Duration | Start | Finish | Predecessors | Resources | Work |
| --- | --- | --- | --- | --- | --- | --- | --- | --- | --- |
| 76 | 4 | **收尾** |  | 1d? | 2020-04-29 | 2020-04-30 |  |  | 80h |
| 77 | 4.1 | 项目终验 | manual | 1d | 2020-04-24 | 2020-04-27 | 75 | UI专家; 测试员; 产品经理; 技术专家; 项目经理 | 40h |
| 78 | 4.2 | 项目收尾 | manual | 1d | 2020-04-27 | 2020-04-28 | 77 | UI专家; 测试员; 产品经理; 技术专家; 项目经理 | 40h |
